# CoronaGantt

How a schedule from MS Project changed from version to version. A marks actual dates.

## Version 1 (saved 2010-05-11)

| ID | WBS | Task | Duration | Start | Finish | Predecessors | Complete | Total float | Constraint |
| --- | --- | --- | --- | --- | --- | --- | --- | --- | --- |
| 1 | 1 | **Sprint 2** | 5.7d? | 2010-04-20 08:00 | 2010-04-27 14:36 |  |  | 14.7d |  |
| 2 |  | As a designer I want all of the buttons to function clearly and properly. | 0.2d | 2010-04-20 08:00 | 2010-04-20 09:36 |  |  | 15.3d |  |
| 3 |  | As a designer I want to be able to create and edit animations. | 1d? | 2010-04-20 09:36 | 2010-04-21 09:36 | 2 |  | 15.3d |  |
| 4 |  | As a developer I want an Event system to send data between objects. | 0.5d | 2010-04-21 09:36 | 2010-04-21 14:36 | 3 |  | 15.3d |  |
| 5 |  | As a developer I want to create an Object Hierarchy, and systems to support them | 1.5d | 2010-04-21 14:36 | 2010-04-23 09:36 | 4 |  | 15.3d |  |
| 6 |  | As a programmer I want to save many animations to one file, and save and load using relative paths | 0.2d | 2010-04-23 09:36 | 2010-04-23 11:12 | 5 |  | 15.3d |  |
| 7 |  | As a user I want to be able to control my character | 1.5d | 2010-04-23 11:12 | 2010-04-26 16:12 | 6 |  | 15.3d |  |
| 9 |  | As a designer I want to be able to create and edit different particle effects | 1d? | 2010-04-20 08:00 | 2010-04-20 17:00 |  |  | 14.5d |  |
| 10 |  | As a designer I want to be able to preview the particle effects before being implemented into the game | 0.2d | 2010-04-21 08:00 | 2010-04-21 09:36 | 9 |  | 14.5d |  |
| 11 |  | As a developer I want the particles to save and load using relative paths | 0.5d | 2010-04-21 09:36 | 2010-04-21 14:36 | 10 |  | 14.5d |  |
| 12 |  | As a programmer I want an In-Game system to load and render the particle effects | 1d | 2010-04-21 14:36 | 2010-04-22 14:36 | 11 |  | 14.5d |  |
| 13 |  | As a programmer I want the menu systems and interface to be easy to use and understand | 1d | 2010-04-22 14:36 | 2010-04-23 14:36 | 12 |  | 14.5d |  |
| 14 |  | As a user I want to be able to save and load my game. | 2d | 2010-04-23 14:36 | 2010-04-27 14:36 | 13 |  | 14.5d |  |
| 16 |  | As a developer I want to sumbit an Art Request to insure my game looks good. | 0.2d | 2010-04-20 08:00 | 2010-04-20 09:36 |  |  | 14.5d |  |
| 17 |  | As a programmer I want an In-Game engine to load in the animations | 1d? | 2010-04-20 09:36 | 2010-04-21 09:36 | 16 |  | 14.5d |  |
| 18 |  | As a user I want enemies in the game, that I can pwn | 1.5d | 2010-04-21 09:36 | 2010-04-22 14:36 | 17 |  | 14.5d |  |
| 19 |  | As a user I want to be able to use the first tier of spells | 2d | 2010-04-22 14:36 | 2010-04-26 14:36 | 18 |  | 14.5d |  |
| 20 |  | As a developer I want a Profiling system to optimize code | 0.5d | 2010-04-26 14:36 | 2010-04-27 09:36 | 19 |  | 14.5d |  |
| 21 |  | As a developer I want a State Machine to change states based on needs | 0.5d | 2010-04-27 09:36 | 2010-04-27 14:36 | 20 |  | 14.5d |  |
| 23 |  | As a developer I want the maps to save and load using relative paths | 0.2d | 2010-04-20 08:00 | 2010-04-20 09:36 |  |  | 15.5d |  |
| 24 |  | As a programmer I want an In-Game engine to render the maps | 1.5d | 2010-04-20 09:36 | 2010-04-21 14:36 | 23 |  | 15.5d |  |
| 25 |  | As a user I want tiles to be able to be destroyed | 0.5d | 2010-04-21 14:36 | 2010-04-22 09:36 | 24 |  | 15.5d |  |
| 26 |  | As a user I want to see characters, objects, spells, and terrain collide | 0.5d | 2010-04-22 09:36 | 2010-04-22 14:36 | 25 |  | 15.5d |  |
| 27 |  | As a designer I want to be able to easily create and edit game levels with the world editor | 2d | 2010-04-22 14:36 | 2010-04-26 14:36 | 26 |  | 15.5d |  |
| 29 | 2 | **Sprint 3** | 11.4d | 2010-05-03 08:00 A | 2010-05-18 11:12 |  | 40% | 0d |  |
| 30 |  | As a developer, I want the enemy spawner to respawn enemies | 0.5d | 2010-05-03 08:00 A | 2010-05-03 12:00 A |  | 100% |  | start no earlier than 2010-05-03 08:00 |
| 31 |  | As a user, I want a free-fire mode while using the game pad | 1d | 2010-05-03 13:00 A | 2010-05-04 12:00 A | 30 | 100% |  | start no earlier than 2010-05-03 08:00 |
| 32 |  | As a user, I want the camera to function properly when playing with two players. | 0.5d | 2010-05-04 13:00 A | 2010-05-04 17:00 A | 31 | 100% |  | start no earlier than 2010-05-03 08:00 |
| 33 |  | As a developer, I want tier 2 spells to rely on energy picked up in the game | 1d | 2010-05-05 08:00 A | 2010-05-05 17:00 A | 32 | 100% |  | start no earlier than 2010-05-03 08:00 |
| 34 |  | As a user, I want multiple fire spells | 1d | 2010-05-06 08:00 A | 2010-05-06 17:00 A | 33 | 100% |  | start no earlier than 2010-05-03 08:00 |
| 35 |  | As a programmer, I want to implement a scoring system based on time and destruction | 1d | 2010-05-07 08:00 | 2010-05-07 17:00 | 34 |  | 6.4d | start no earlier than 2010-05-03 08:00 |
| 36 |  | Sticky Numbers | 0.2d | 2010-05-10 08:00 A | 2010-05-10 09:36 A | 35 | 100% |  | start no earlier than 2010-05-03 08:00 |
| 37 |  | As a developer, I want the game to be arcade machine compliant | 0.5d | 2010-05-10 09:36 | 2010-05-10 14:36 | 36 |  | 0d | start no earlier than 2010-05-03 08:00 |
| 38 |  | As a developer, I want the tier 1 fire spells done | 0.2d | 2010-05-10 14:36 | 2010-05-10 16:12 | 37 |  | 0d | start no earlier than 2010-05-03 08:00 |
| 39 |  | As a Designer, I want the Fire Enemy to be different from the other enemies | 1.5d | 2010-05-10 16:12 | 2010-05-12 11:12 | 38 |  | 0d | start no earlier than 2010-05-03 08:00 |
| 40 |  | As a developer, I want the Air Currents in the game that push the player around | 0.5d | 2010-05-12 11:12 | 2010-05-12 16:12 | 39 |  | 0d | start no earlier than 2010-05-03 08:00 |
| 41 |  | As a user, I want the spells to have effects on the alternate terrain | 1.5d | 2010-05-12 16:12 | 2010-05-14 11:12 | 40 |  | 0d | start no earlier than 2010-05-03 08:00 |
| 42 |  | As a user, I want to play different multiplayer game modes such as co-op and death-match | 2d | 2010-05-14 11:12 | 2010-05-18 11:12 | 41 |  | 0d | start no earlier than 2010-05-03 08:00 |
| 44 |  | As a user, I would like to have a HUD. | 1d | 2010-05-03 08:00 A | 2010-05-03 17:00 A |  | 100% |  | start no earlier than 2010-05-03 08:00 |
| 45 |  | As a user, I want my option configurations saved auto-magically | 0.5d | 2010-05-04 08:00 A | 2010-05-04 12:00 A | 44 | 100% |  | start no earlier than 2010-05-03 08:00 |
| 46 |  | As a developer, I want to implement a win/lose condition | 1d | 2010-05-04 13:00 A | 2010-05-05 12:00 A | 45 | 100% |  | start no earlier than 2010-05-03 08:00 |
| 47 |  | As a designer, I want an attract mode that attracts people. | 0.5d | 2010-05-05 13:00 A | 2010-05-05 17:00 A | 46 | 100% |  | start no earlier than 2010-05-03 08:00 |
| 48 |  | As a developer, I want Lava terrain to hurt the player | 0.2d | 2010-05-06 08:00 A | 2010-05-06 09:36 A | 47 | 100% |  | start no earlier than 2010-05-03 08:00 |
| 49 |  | As a user, I want to transition between levels | 1.5d | 2010-05-06 09:36 A | 2010-05-07 14:36 A | 48 | 100% |  | start no earlier than 2010-05-03 08:00 |
| 50 |  | As a developer, I want the tier 1 ice spells done | 0.5d | 2010-05-07 14:36 A | 2010-05-10 09:36 A | 49 | 100% |  | start no earlier than 2010-05-03 08:00 |
| 51 |  | As a user, I want multiple ice spells | 1.5d | 2010-05-10 09:36 | 2010-05-11 14:36 | 50 |  | 1.2d | start no earlier than 2010-05-03 08:00 |
| 52 |  | As a user, I want a mini-map to help me get around the level | 2d | 2010-05-11 14:36 | 2010-05-13 14:36 | 51 |  | 1.2d | start no earlier than 2010-05-03 08:00 |
| 53 |  | As a Designer, I want the Ice Enemy to be different from the other enemies | 0.5d | 2010-05-13 14:36 | 2010-05-14 09:36 | 52 |  | 1.2d | start no earlier than 2010-05-03 08:00 |
| 54 |  | As a developer, I want the particle engine to be complete | 1d | 2010-05-14 09:36 | 2010-05-17 09:36 | 53 |  | 1.2d | start no earlier than 2010-05-03 08:00 |
| 56 |  | As a designer, I want spells to increase in power the more you use that type of spell | 0.2d | 2010-05-03 08:00 A | 2010-05-03 09:36 A |  | 100% |  | start no earlier than 2010-05-03 08:00 |
| 57 |  | As a designer, I want the enemies to be effected differently based on their type and spell type | 0.5d | 2010-05-03 09:36 A | 2010-05-03 14:36 A | 56 | 100% |  | start no earlier than 2010-05-03 08:00 |
| 58 |  | As a user, I want multiple earth spells | 2d | 2010-05-03 14:36 A | 2010-05-05 14:36 A | 57 | 100% |  | start no earlier than 2010-05-03 08:00 |
| 59 |  | As a developer, I want the tier 1 wind spells done | 0.5d | 2010-05-05 14:36 A | 2010-05-06 09:36 A | 58 | 100% |  | start no earlier than 2010-05-03 08:00 |
| 60 |  | As a user, I want multiple wind spells | 2d | 2010-05-06 09:36 | 2010-05-10 09:36 | 59 |  | 4.2d | start no earlier than 2010-05-03 08:00 |
| 61 |  | As a Designer, I want the Wind Enemy to be different from the other enemies | 2d | 2010-05-10 09:36 | 2010-05-12 09:36 | 60 |  | 4.2d | start no earlier than 2010-05-03 08:00 |
| 63 |  | As a designer, I want the player to hit switches to progress through the level | 2d | 2010-05-03 08:00 A | 2010-05-04 17:00 A |  | 100% |  | start no earlier than 2010-05-03 08:00 |
| 64 |  | As a user, I want my spells to cancel out hostile spells | 0.2d | 2010-05-05 08:00 A | 2010-05-05 09:36 A | 63 | 100% |  | start no earlier than 2010-05-03 08:00 |
| 65 |  | As a Designer, I want the Earth Enemy to be different from the other enemies | 0.5d | 2010-05-05 09:36 A | 2010-05-05 14:36 A | 64 | 100% |  | start no earlier than 2010-05-03 08:00 |
| 66 |  | As a user, I want the state of the terrain to be saved | 1.5d | 2010-05-05 14:36 | 2010-05-07 09:36 | 65 |  | 1.7d | start no earlier than 2010-05-03 08:00 |
| 67 |  | As a developer, I want water terrain to hurt the player and flood the level | 1d | 2010-05-07 09:36 | 2010-05-10 09:36 | 66 |  | 1.7d | start no earlier than 2010-05-03 08:00 |
| 68 |  | As a user, I want the spells of different elements to interact with each other | 2d | 2010-05-10 09:36 | 2010-05-12 09:36 | 67 |  | 1.7d | start no earlier than 2010-05-03 08:00 |
| 69 |  | As a designer, I want a final boss, decided by how quickly the player gets to the end. | 2d | 2010-05-12 09:36 | 2010-05-14 09:36 | 68 |  | 1.7d | start no earlier than 2010-05-03 08:00 |
| 70 |  | Switches allow for next level | 0.5d | 2010-05-14 09:36 | 2010-05-14 14:36 | 69 |  | 1.7d | start no earlier than 2010-05-03 08:00 |

## Version 2 (saved 2010-05-11)

Last finish stays 2010-05-18. Complete tasks 20 → 27.

Changed:

| ID | Task | Start | Finish | Complete | Total float |
| --- | --- | --- | --- | --- | --- |
| 29 | **Sprint 3** |  |  | 40% → 58% |  |
| 35 | As a programmer, I want to implement a scoring system based on time and destruction | 2010-05-07 08:00 A | 2010-05-07 17:00 A | 0% → 100% | 6.4d → none |
| 37 | As a developer, I want the game to be arcade machine compliant | 2010-05-10 09:36 A | 2010-05-10 14:36 A | 0% → 100% | 0d → none |
| 38 | As a developer, I want the tier 1 fire spells done | 2010-05-10 14:36 A | 2010-05-10 16:12 A | 0% → 100% | 0d → none |
| 39 | As a Designer, I want the Fire Enemy to be different from the other enemies | 2010-05-10 16:12 A | 2010-05-12 11:12 A | 0% → 100% | 0d → none |
| 60 | As a user, I want multiple wind spells | 2010-05-06 09:36 A | 2010-05-10 09:36 A | 0% → 100% | 4.2d → none |
| 66 | As a user, I want the state of the terrain to be saved | 2010-05-05 14:36 A | 2010-05-07 09:36 A | 0% → 100% | 1.7d → none |
| 70 | Switches allow for next level | 2010-05-14 09:36 A | 2010-05-14 14:36 A | 0% → 100% | 1.7d → none |

## Version 3 (saved 2010-05-12)

Last finish stays 2010-05-18. Complete tasks 27 → 28.

Changed:

| ID | Task | Start | Finish | Complete | Total float |
| --- | --- | --- | --- | --- | --- |
| 29 | **Sprint 3** |  |  | 58% → 66% |  |
| 51 | As a user, I want multiple ice spells | 2010-05-10 09:36 A |  | 0% → 50% | 1.2d → 4.7d |
| 52 | As a user, I want a mini-map to help me get around the level | 2010-05-11 14:36 A | 2010-05-13 14:36 A | 0% → 100% | 1.2d → none |

## Version 4 (saved 2010-05-13)

Last finish stays 2010-05-18. Complete tasks 28 → 33.

Changed:

| ID | Task | Start | Finish | Complete | Total float |
| --- | --- | --- | --- | --- | --- |
| 29 | **Sprint 3** |  |  | 66% → 80% |  |
| 40 | As a developer, I want the Air Currents in the game that push the player around | 2010-05-12 11:12 A | 2010-05-12 16:12 A | 0% → 100% | 0d → none |
| 41 | As a user, I want the spells to have effects on the alternate terrain | 2010-05-12 16:12 A | 2010-05-14 11:12 A | 0% → 100% | 0d → none |
| 53 | As a Designer, I want the Ice Enemy to be different from the other enemies | 2010-05-13 14:36 A | 2010-05-14 09:36 A | 0% → 100% | 1.2d → none |
| 67 | As a developer, I want water terrain to hurt the player and flood the level | 2010-05-07 09:36 A | 2010-05-10 09:36 A | 0% → 100% | 2.2d → none |
| 68 | As a user, I want the spells of different elements to interact with each other | 2010-05-10 09:36 A | 2010-05-12 09:36 A | 0% → 100% | 2.2d → none |
